# 西安印钞厂(挣值分析）

How a schedule from MS Project changed from version to version. A marks actual dates.

## Version 1 (data date 2001-07-08, saved 2001-11-07, file 西安印钞厂降噪工程(挣值分析）.mpp)

Note of the change: add

| ID | Task | Duration | Start | Finish | Predecessors | Complete | Total float | Constraint |
| --- | --- | --- | --- | --- | --- | --- | --- | --- |
| 1 | 设备保护 | 1d | 2001-07-01 A | 2001-07-01 A |  | 100% |  | start no earlier than 2001-07-01 |
| 2 | 1段天棚搭架 | 2d | 2001-07-02 A | 2001-07-03 A | 1 | 100% |  | start no earlier than 2001-07-02 |
| 3 | 2段天棚搭架 | 2d | 2001-07-04 A | 2001-07-05 A | 2 | 100% |  | start no earlier than 2001-07-04 |
| 4 | 3段天棚搭架 | 2d | 2001-07-06 A | 2001-07-07 A | 3 | 100% |  | start no earlier than 2001-07-06 |
| 5 | 1段天棚拆除 | 2d | 2001-07-04 A | 2001-07-05 A | 2 | 100% |  | start no earlier than 2001-07-04 |
| 6 | 2段天棚拆除 | 2d | 2001-07-06 A | 2001-07-07 A | 5, 3 | 100% |  | start no earlier than 2001-07-06 |
| 7 | 3段天棚拆除 | 2d | 2001-07-08 A | 2001-07-09 | 6, 4 | 75% | 1d | start no earlier than 2001-07-08 |
| 8 | 1段天棚放线 | 2d | 2001-07-06 A | 2001-07-07 A | 5 | 100% |  | start no earlier than 2001-07-06 |
| 9 | 2段天棚放线 | 2d | 2001-07-08 A | 2001-07-09 | 6, 8 | 85% | 1d | start no earlier than 2001-07-08 |
| 10 | 3段天棚放线 | 1d | 2001-07-10 | 2001-07-10 | 7, 9 |  | 1d | start no earlier than 2001-07-10 |
| 11 | 天龙骨安放 | 4d | 2001-07-11 | 2001-07-14 | 10 |  | 1d | start no earlier than 2001-07-11 |
| 12 | 吸波材料铺设 | 4d | 2001-07-11 | 2001-07-14 | 10 |  | 1d | start no earlier than 2001-07-11 |
| 13 | 天棚板安装 | 1d | 2001-07-15 | 2001-07-15 | 11, 12 |  | 1d | start no earlier than 2001-07-15 |
| 14 | 拆架 | 2d | 2001-07-16 | 2001-07-17 | 13 |  | 1d | start no earlier than 2001-07-16 |
| 15 | 墙面拆除 | 2d | 2001-07-02 A | 2001-07-03 A | 1 | 100% |  | start no earlier than 2001-07-02 |
| 16 | 墙面放线 | 1d | 2001-07-04 A | 2001-07-04 A | 15 | 100% |  | start no earlier than 2001-07-04 |
| 17 | 墙面龙骨 | 3d | 2001-07-05 A | 2001-07-07 A | 16 | 100% |  | start no earlier than 2001-07-05 |
| 18 | 吸音材料 | 3d | 2001-07-05 A | 2001-07-07 A | 16 | 100% |  | start no earlier than 2001-07-05 |
| 19 | 塑铝板墙面制作 | 11d | 2001-07-08 A | 2001-07-18 | 17, 18 | 40% | 0d | start no earlier than 2001-07-08 |
| 20 | 竣工 | 1d | 2001-07-19 | 2001-07-19 | 19, 14 |  | 0d | start no earlier than 2001-07-19 |

## Version 2 (saved 2002-01-02, file 西安印钞厂降噪工程网络图.mpp)

Note of the change: add

Last finish stays 2001-07-19. Complete tasks 11 → 0.

Changed:

| ID | Task | Start | Finish | Duration | Complete | Total float | Other |
| --- | --- | --- | --- | --- | --- | --- | --- |
| 1 | 设备保护 | 2001-07-01 A → 2001-07-01 | 2001-07-01 A → 2001-07-01 |  | 100% → 0% | none → 1d |  |
| 2 | 1段天棚搭架 | 2001-07-02 A → 2001-07-02 | 2001-07-03 A → 2001-07-03 |  | 100% → 0% | none → 1d |  |
| 3 | 2段天棚搭架 | 2001-07-04 A → 2001-07-04 | 2001-07-05 A → 2001-07-05 |  | 100% → 0% | none → 1d |  |
| 4 | 3段天棚搭架 | 2001-07-06 A → 2001-07-06 | 2001-07-07 A → 2001-07-07 |  | 100% → 0% | none → 1d |  |
| 5 | 1段天棚拆除 | 2001-07-04 A → 2001-07-04 | 2001-07-05 A → 2001-07-05 |  | 100% → 0% | none → 1d |  |
| 6 | 2段天棚拆除 | 2001-07-06 A → 2001-07-06 | 2001-07-07 A → 2001-07-07 |  | 100% → 0% | none → 1d |  |
| 7 | 3段天棚拆除 | 2001-07-08 A → 2001-07-08 |  |  | 75% → 0% |  |  |
| 8 | 1段天棚放线 | 2001-07-06 A → 2001-07-06 | 2001-07-07 A → 2001-07-07 |  | 100% → 0% | none → 1d |  |
| 9 | 2段天棚放线 | 2001-07-08 A → 2001-07-08 |  |  | 85% → 0% |  |  |
| 12 | 吸波材料铺设 | 2001-07-11 → 2001-07-12 (+1d) | 2001-07-14 → 2001-07-15 (+1d) |  |  | 1d → 0d | constraint start no earlier than 2001-07-11 → start no earlier than 2001-07-12 |
| 13 | 天棚板安装 | 2001-07-15 → 2001-07-16 (+1d) | 2001-07-15 → 2001-07-16 (+1d) |  |  | 1d → 0d |  |
| 14 | 拆架 | 2001-07-16 → 2001-07-17 (+1d) | 2001-07-17 → 2001-07-18 (+1d) |  |  | 1d → 0d |  |
| 15 | 墙面拆除 | 2001-07-02 A → 2001-07-02 | 2001-07-03 A → 2001-07-03 |  | 100% → 0% | none → 1d |  |
| 16 | 墙面放线 | 2001-07-04 A → 2001-07-04 | 2001-07-04 A → 2001-07-04 |  | 100% → 0% | none → 1d |  |
| 17 | 墙面龙骨 | 2001-07-05 A → 2001-07-05 | 2001-07-07 A → 2001-07-07 |  | 100% → 0% | none → 1d |  |
| 18 | 吸音材料 | 2001-07-05 A → 2001-07-06 (+1d) | 2001-07-07 A → 2001-07-08 (+1d) |  | 100% → 0% | none → 0d | constraint start no earlier than 2001-07-05 → start no earlier than 2001-07-06 |
| 19 | 塑铝板墙面制作 | 2001-07-08 A → 2001-07-09 (+1d) |  | 11d → 10d | 40% → 0% |  |  |
